# grupo 3 Duracion y precedencias.

Schedule from MS Project, 2025-09-30 to 2025-12-19, costs in $.

## Calendars

- Estándar: Mon-Fri 09:00-13:00, 15:00-19:00; Sat-Sun off.

## Resources

| Resource | Rate | Cost per use |
| --- | --- | --- |
| Desarrollador full stack | 76711 |  |
| Desarrollador full stack 2 | 76711 |  |
| Analista Junior | 46327 |  |
| Arquitecto de SW | 88689 |  |
| Desarrolador Backend | 72261 |  |
| DevOps | 84487 |  |
| Analista Junior 2 | 46327 |  |
| Dispositivo NAS |  | 1776000 |
| Servidor VPS |  | 300000 |
| Jefe PROYECTO |  | 66504 |

## Schedule

| ID | WBS | Task | Type | Duration | Start | Finish | Predecessors | Total slack | Free slack | Constraint | Resources | Work | Cost |
| --- | --- | --- | --- | --- | --- | --- | --- | --- | --- | --- | --- | --- | --- |
| 1 | 1 | **Proyecto POS Corralon "M"** |  | 58.25d | 2025-09-30 | 2025-12-19 |  | 0d |  |  | Jefe PROYECTO | 846.64h | 62,479,992.61 |
| 2 | 1.1 | **Inicio** |  | 9.65d | 2025-09-30 | 2025-10-13 |  | 0.27d |  |  |  | 176.64h | 10,789,869.28 |
| 3 | 1.1.1 | Entrevistar a los dueños |  | 0.4d | 2025-09-30 | 2025-09-30 |  | 0.27d | 0d |  | Analista Junior | 3.2h | 148,246.4 |
| 4 | 1.1.2 | Obtener el libro de ventas |  | 0.18d | 2025-09-30 | 2025-09-30 | 3 | 1.09d | 0d |  | Analista Junior 2 | 1.44h | 66,710.88 |
| 5 | 1.1.3 | Analizar la estructura del libro de ventas |  | 1d | 2025-09-30 | 2025-10-01 | 4 | 1.09d | 0.82d |  | Desarrollador full stack; Analista Junior 2 | 16h | 984,304 |
| 6 | 1.1.4 | Realizar el analisis de requerimientos |  | 2d | 2025-09-30 | 2025-10-02 | 3 | 0.27d | 0d |  | Analista Junior; Arquitecto de SW | 32h | 2,160,256 |
| 7 | 1.1.5 | Redactar casos de uso y reglas de negocio |  | 3d | 2025-10-02 | 2025-10-07 | 5, 6 | 0.27d | 0d |  | Analista Junior 2; Arquitecto de SW | 48h | 3,240,384 |
| 8 | 1.1.6 | Definir requerimientos no funcionales. |  | 2d | 2025-10-02 | 2025-10-06 | 5, 6 | 1.27d | 1d |  | Analista Junior | 16h | 741,232 |
| 9 | 1.1.7 | Documentar los requerimientos |  | 2d | 2025-10-07 | 2025-10-09 | 7, 8 | 0.27d | 0d |  | Analista Junior 2 | 16h | 741,232 |
| 10 | 1.1.8 | Priorizar requisitos |  | 0.5d | 2025-10-09 | 2025-10-09 | 9 | 2.02d | 1.75d |  | Analista Junior; Arquitecto de SW | 8h | 540,064 |
| 11 | 1.1.9 | Verificar el documento de requerimientos con el cliente |  | 0.25d | 2025-10-09 | 2025-10-09 | 9 | 0.27d | 0d |  | Analista Junior 2; Arquitecto de SW | 4h | 270,032 |
| 12 | 1.1.10 | Estudiar documentacion de la API del sw enlatado |  | 2d | 2025-10-09 | 2025-10-13 | 11 | 0.27d | 0d |  | Analista Junior; Desarrolador Backend | 32h | 1,897,408 |
| 13 | 1.1.12 | Modelo de casos de uso y requerimientos especificos terminado | milestone | 0d | 2025-10-13 | 2025-10-13 | 10, 11, 12 | 0.27d | 0d |  |  |  |  |
| 14 | 1.2 | **Elaboración** |  | 13.85d | 2025-10-13 | 2025-10-31 |  | 0d |  |  |  | 246h | 20,659,459.33 |
| 15 | 1.2.1 | Analizar caracteristicas, documentacion y diseño del sistema similar |  | 1d | 2025-10-13 | 2025-10-14 | 13 | 0.27d | 0d |  |  |  |  |
| 16 | 1.2.3 | Diseñar modelo conceptual |  | 2d | 2025-10-14 | 2025-10-16 | 15 | 0.27d | 0d |  | Analista Junior; Arquitecto de SW | 32h | 2,160,256 |
| 17 | 1.2.4 | Definir tablas y atributos de la base de datos |  | 1d | 2025-10-16 | 2025-10-17 | 16, 18SS, 19SS, 20SS | 2.27d | 2d |  | Analista Junior 2; Desarrolador Backend | 16h | 948,704 |
| 18 | 1.2.5 | Definir el diseño e Informacion de las pantallas |  | 2d | 2025-10-16 | 2025-10-20 | 16 | 1.27d | 0d |  | Desarrollador full stack | 16h | 1,227,376 |
| 19 | 1.2.6 | Definir los procesos a realizar |  | 2d | 2025-10-16 | 2025-10-20 | 16 | 1.27d | 0d |  | Analista Junior; Arquitecto de SW | 32h | 2,160,256 |
| 20 | 1.2.7 | Definir los flujos de trabajo |  | 3d | 2025-10-16 | 2025-10-21 | 16 | 0.27d | 0d |  | Desarrollador full stack 2 | 24h | 1,841,064 |
| 21 | 1.2.8 | diseñar el prototipo arquitectónico base |  | 3.33d | 2025-10-21 | 2025-10-24 | 17, 18, 19, 20 | 0.27d | 0d |  | Arquitecto de SW; Desarrollador full stack; DevOps | 80h | 6,663,653.33 |
| 22 | 1.2.8 | Evaluar opciones de infraestructura en la nube |  | 0.25d | 2025-10-24 | 2025-10-27 | 21 | 0.27d | 0d |  | Analista Junior | 2h | 92,654 |
| 23 | 1.2.9 | Contratar servicio en la nube |  | 0.25d | 2025-10-24 | 2025-10-27 | 22SS, 21 | 0.27d |  |  | Arquitecto de SW; Servidor VPS | 2h | 477,378 |
| 24 | 1.2.10 | Adquirir disco fisico para backups |  | 0.25d | 2025-10-24 | 2025-10-27 | 21 | 2.27d | 0d |  | Analista Junior 2; Dispositivo NAS | 2h | 1,868,654 |
| 25 | 1.2.11 | Configurar servidor en la nube |  | 4d | 2025-10-27 | 2025-10-31 | 23 | 0d |  | finish no earlier than 2025-10-31 | Desarrollador full stack; DevOps [50%] | 24h | 1,965,480 |
| 26 | 1.2.12 | Configurar backups |  | 2d | 2025-10-27 | 2025-10-29 | 24 | 2.27d |  |  | Desarrolador Backend; DevOps [50%] | 16h | 1,253,984 |
| 27 | 1.2.9 | Modelo de Arquitectura Terminado | milestone | 0d | 2025-10-31 | 2025-10-31 | 26, 25 | 0d |  |  |  |  |  |

| ID | WBS | Task | Type | Duration | Start | Finish | Predecessors | Total slack | Constraint | Resources | Work | Cost |
| --- | --- | --- | --- | --- | --- | --- | --- | --- | --- | --- | --- | --- |
| 28 | 1.3 | **Construcción** |  | 28d | 2025-10-31 | 2025-12-10 |  | 0d |  |  | 356h | 26,686,116 |
| 29 | 1.3.1 | Desarrollar modulo de informes y consultas |  | 7d | 2025-10-31 | 2025-11-11 | 27 | 0d |  | Desarrolador Backend; Desarrollador full stack | 112h | 8,342,432 |
| 30 | 1.3.2 | Desarrollar servicios de api de facturacion. |  | 2.5d | 2025-11-11 | 2025-11-13 | 29 | 0d |  | Desarrolador Backend | 20h | 1,445,220 |
| 31 | 1.1.11 | Desarrollar el modulo de ventas y pagos |  | 5d | 2025-11-14 | 2025-11-21 | 30 | 0d |  | Desarrolador Backend; Desarrollador full stack | 80h | 5,958,880 |
| 32 | 1.3.3 | Desarrollar el modulo de proveedores y gestion de compras |  | 3d | 2025-11-21 | 2025-11-26 | 31 | 0d |  | Desarrolador Backend; Desarrollador full stack 2 | 48h | 3,575,328 |
| 33 | 1.3.5 | Desarrollar servicios de consumo de api de inventario |  | 2.5d | 2025-11-11 | 2025-11-13 | 30SS | 9d |  | Desarrollador full stack | 20h | 1,534,220 |
| 34 | 1.3.6 | Integrar módulos del sistema |  | 7d | 2025-11-27 | 2025-12-05 | 33, 29, 30, 31, 32 | 0d |  | Desarrollador full stack | 56h | 4,295,816 |
| 35 | 1.3.7 | Testear beta del sistema version beta |  | 2.5d | 2025-12-08 | 2025-12-10 | 34 | 0d |  | Desarrollador full stack | 20h | 1,534,220 |
| 36 | 1.3.4 | Version beta del sistema entregada | milestone | 0d | 2025-12-10 | 2025-12-10 | 35 | 0d | start no earlier than 2025-11-07 |  |  |  |
| 37 | 1.6 | **Transición** |  | 6.75d | 2025-12-10 | 2025-12-19 |  | 0d |  |  | 68h | 4,278,044 |
| 38 | 1.6.1 | confeccionar manual de usuario para uso del software |  | 0.75d | 2025-12-10 | 2025-12-11 | 36 | 0d |  | Analista Junior; Analista Junior 2 | 12h | 555,924 |
| 39 | 1.6.2 | Capacitar al personal |  | 1.5d | 2025-12-11 | 2025-12-12 | 38 | 0d |  | Analista Junior | 12h | 555,924 |
| 40 | 1.6.3 | Poner en accion el nuevo sistema |  | 1d | 2025-12-12 | 2025-12-16 | 39 | 0d |  | DevOps | 8h | 675,896 |
| 41 | 1.6.4 | Realizar pruebas unitarias y de aceptación con casos de uso reales. |  | 1.5d | 2025-12-16 | 2025-12-17 | 40 | 0d |  | DevOps | 12h | 1,013,844 |
| 42 | 1.6.5 | Ajustar los problemas del sistema según el feedback que tenga |  | 1.5d | 2025-12-17 | 2025-12-19 | 41 | 0d |  | Analista Junior; Desarrollador full stack | 24h | 1,476,456 |
| 43 | 1.6.6 | Sistema con ajustes finales entregado | milestone | 0d | 2025-12-19 | 2025-12-19 | 42 | 0d |  |  |  |  |
| 44 | 1.6.7 | sistema terminado e integrado con el sistema anterior | milestone | 0d | 2025-12-19 | 2025-12-19 | 37 | 0d |  |  |  |  |
